# پروژه قطعه سازی

Schedule from MS Project, 2024-09-25 to 2024-12-15, costs in IRR, A marks actual dates.

## Calendars

- Standard: Mon-Thu 08:00-12:00, 13:00-17:00; Fri off; Sat-Sun 08:00-12:00, 13:00-17:00.

## Resources

| Resource | Unit | Rate | Cost per use |
| --- | --- | --- | --- |
| کارگر |  | 20000 |  |
| مکانیک |  | 300000 |  |
| برق |  | 450000 |  |
| متلوژی |  | 50000 |  |
| مونتاژ کار |  | 600000 |  |
| حسابدار |  | 70000 |  |
| جرثقیل |  | 800000 | 2000000 |
| ربات مونتاژ |  | 450000 | 3000000 |
| اهن | تن | 20000 |  |
| مس | تن | 20000 |  |
| فولاد | تن | 60000 |  |
| سنگ | تن |  |  |
| هزینه ریخته گری |  |  |  |

## Schedule

| ID | WBS | Task | Type | Duration | Start | Finish | Predecessors | Complete | Remaining | Baseline start | Baseline finish | Baseline duration | Total slack | Free slack | Deadline | Resources | Work | Cost | Baseline cost |
| --- | --- | --- | --- | --- | --- | --- | --- | --- | --- | --- | --- | --- | --- | --- | --- | --- | --- | --- | --- |
| 1 | 1 | **طراحی** |  | 29d | 2024-09-25 A | 2024-10-28 |  | 41% | 17.08d | 2024-09-25 | 2024-10-28 | 29d | 7d | 0d |  |  | 280h | 87,600,000 | 87,600,000 |
| 2 | 1.1 | **تهیه مدل کلی** |  | 8d | 2024-09-25 A | 2024-10-03 |  | 25% | 6d | 2024-09-25 | 2024-10-03 | 8d | 0d |  |  |  |  |  |  |
| 3 | 1.1.1 | شروع فاز ۱ | milestone | 0d | 2024-09-25 | 2024-09-25 |  |  |  | 2024-09-25 | 2024-09-25 | 0d | 2d | 0d |  |  |  |  |  |
| 4 | 1.1.2 | اخذ مشخصات کلی |  | 3d | 2024-09-25 A | 2024-09-28 | 3 | 67% | 1d | 2024-09-25 | 2024-09-28 | 3d | 0d |  |  |  |  |  |  |
| 5 | 1.1.3 | تهیه طرح شماتیک دستی |  | 4d | 2024-09-29 | 2024-10-02 | 4 |  |  | 2024-09-29 | 2024-10-02 | 4d | 0d |  |  |  |  |  |  |
| 6 | 1.1.4 | اخذ تاییدیه اولیه |  | 1d | 2024-10-03 | 2024-10-03 | 5 |  |  | 2024-10-03 | 2024-10-03 | 1d | 0d |  |  |  |  |  |  |
| 7 | 1.2 | **طراحی و شبیه سازی** |  | 21d | 2024-10-05 A | 2024-10-28 | 2 | 45% | 11.64d | 2024-10-05 | 2024-10-28 | 21d | 7d |  |  |  | 280h | 87,600,000 | 87,600,000 |
| 8 | 1.2.1 | **طراحی بدنه** |  | 13d | 2024-10-05 A | 2024-10-19 |  | 50% | 6.5d | 2024-10-05 | 2024-10-19 | 13d | 7d |  |  |  | 192h | 57,600,000 | 57,600,000 |
| 9 | 1.2.1.1 | طراحی کلی بدنه |  | 5d | 2024-10-05 A | 2024-10-09 A |  | 100% |  | 2024-10-05 | 2024-10-09 | 5d |  |  |  |  |  |  |  |
| 10 | 1.2.1.2 | اخذ تاییدیه |  | 2d | 2024-10-10 A | 2024-10-12 | 9 | 75% | 0.5d | 2024-10-10 | 2024-10-12 | 2d | 2d | 0d | 2024-10-14 |  |  |  |  |
| 11 | 1.2.1.3 | طراحی جزئییات و رندرینگ |  | 6d | 2024-10-13 | 2024-10-19 | 10 |  |  | 2024-10-13 | 2024-10-19 | 6d | 7d | 0d |  | مکانیک [400%] | 192h | 57,600,000 | 57,600,000 |
| 12 | 1.2.2 | **طراحی اجزا** |  | 10d | 2024-10-13 A | 2024-10-23 |  | 63% | 3.75d | 2024-10-13 | 2024-10-24 | 11d | 9d |  |  |  | 24h | 7,200,000 | 7,200,000 |
| 13 | 1.2.2.1 | طراحی اجزا فلزی |  | 3d | 2024-10-13 | 2024-10-15 | 10 |  |  | 2024-10-13 | 2024-10-15 | 3d | 3d | 0d |  | مکانیک | 24h | 7,200,000 | 7,200,000 |
| 14 | 1.2.2.2 | طراحی اجزا پلاستیکی |  | 6d | 2024-10-15 A | 2024-10-21 | 13SS+2d | 50% | 3d | 2024-10-15 | 2024-10-20 | 5d | 11d | 4d |  |  |  |  |  |
| 15 | 1.2.2.3 | طراحی مدارات الکترونیکی |  | 7d | 2024-10-16 A | 2024-10-23 A | 13 | 100% |  | 2024-10-16 | 2024-10-24 | 8d |  |  |  |  |  |  |  |
| 16 | 1.2.3 | **انجام تست های شبیه سازی** |  | 8d | 2024-10-20 | 2024-10-28 |  |  |  | 2024-10-20 | 2024-10-28 | 8d | 7d |  |  |  | 64h | 22,800,000 | 22,800,000 |
| 17 | 1.2.3.1 | شبیه سازی فشار و حرارت بدنه |  | 3d | 2024-10-20 | 2024-10-22 | 11 |  |  | 2024-10-20 | 2024-10-22 | 3d | 7d | 0d |  |  |  |  |  |
| 18 | 1.2.3.2 | شبیه سازی فشارو حرارت اجزا فلزی |  | 3d | 2024-10-23 | 2024-10-26 | 17, 13 |  |  | 2024-10-23 | 2024-10-26 | 3d | 7d | 0d |  | مکانیک; برق | 48h | 18,000,000 | 18,000,000 |
| 19 | 1.2.3.3 | شبیه سازی فشار و حرارت اجزا پلاستیکی |  | 2d | 2024-10-27 | 2024-10-28 | 17, 14, 18 |  |  | 2024-10-27 | 2024-10-28 | 2d | 7d | 0d |  | مکانیک | 16h | 4,800,000 | 4,800,000 |
| 20 | 1.2.3.4 | پایان فاز ۱ | milestone | 0d | 2024-10-28 | 2024-10-28 | 19 |  |  | 2024-10-28 | 2024-10-28 | 0d | 7d |  |  |  |  |  |  |
| 21 | 2 | **تهیه ملزومات** |  | 8d | 2024-10-29 | 2024-11-06 | 1 |  |  | 2024-10-29 | 2024-11-06 | 8d | 7d | 0d |  |  |  |  |  |
| 22 | 2.1 | **تهیه قطعات الکترونیکی** |  | 7d | 2024-10-29 | 2024-11-05 |  |  |  | 2024-10-29 | 2024-11-05 | 7d | 8d |  |  |  |  |  |  |
| 23 | 2.1.1 | تهیه لیست |  | 2d | 2024-10-29 | 2024-10-30 |  |  |  | 2024-10-29 | 2024-10-30 | 2d | 8d | 0d |  |  |  |  |  |
| 24 | 2.1.2 | استعلام |  | 1d | 2024-10-31 | 2024-10-31 | 23 |  |  | 2024-10-31 | 2024-10-31 | 1d | 8d | 0d |  |  |  |  |  |
| 25 | 2.1.3 | خرید |  | 1d | 2024-11-05 | 2024-11-05 | 24FS+3d |  |  | 2024-11-05 | 2024-11-05 | 1d | 8d |  |  |  |  |  |  |

| ID | WBS | Task | Duration | Start | Finish | Predecessors | Complete | Remaining | Baseline start | Baseline finish | Baseline duration | Total slack | Free slack | Resources | Work | Actual work | Cost | Baseline cost | Actual cost |
| --- | --- | --- | --- | --- | --- | --- | --- | --- | --- | --- | --- | --- | --- | --- | --- | --- | --- | --- | --- |
| 26 | 2.2 | **تهیه قطعات فلزی** | 8d | 2024-10-29 | 2024-11-06 |  |  |  | 2024-10-29 | 2024-11-06 | 8d | 7d |  |  |  |  |  |  |  |
| 27 | 2.2.1 | تهیه لیست | 2d | 2024-10-29 | 2024-10-30 |  |  |  | 2024-10-29 | 2024-10-30 | 2d | 7d | 0d |  |  |  |  |  |  |
| 28 | 2.2.2 | استعلام | 1d | 2024-10-31 | 2024-10-31 | 27 |  |  | 2024-10-31 | 2024-10-31 | 1d | 7d | 0d |  |  |  |  |  |  |
| 29 | 2.2.3 | خرید | 1d | 2024-11-05 | 2024-11-05 | 28FS+3d |  |  | 2024-11-05 | 2024-11-05 | 1d | 7d | 0d |  |  |  |  |  |  |
| 30 | 2.2.4 | انتقال | 1d | 2024-11-06 | 2024-11-06 | 29 |  |  | 2024-11-06 | 2024-11-06 | 1d | 7d |  |  |  |  |  |  |  |
| 31 | 3 | **ساخت** | 33d | 2024-11-06 A | 2024-12-15 | 21 | 4% | 31.78d | 2024-11-06 | 2024-12-15 | 33d | 0d |  |  | 224h | 16h | 74,204,000 | 74,204,000 | 13,004,000 |
| 32 | 3.1 | **ساخت قطعات فلزی** | 22d | 2024-11-06 A | 2024-12-02 |  | 7% | 20.43d | 2024-11-06 | 2024-12-02 | 22d | 0d |  |  | 208h | 16h | 69,404,000 | 69,404,000 | 13,004,000 |
| 33 | 3.1.1 | قالب سازی | 15d | 2024-11-07 | 2024-11-24 |  |  |  | 2024-11-07 | 2024-11-24 | 15d | 7d |  | مکانیک | 120h |  | 36,000,000 | 36,000,000 |  |
| 34 | 3.1.2 | سرد شدن | 2ed | 2024-11-06 | 2024-11-08 |  |  |  | 2024-11-06 | 2024-11-08 | 2ed | 73.88d |  |  |  |  |  |  |  |
| 35 | 3.1.3 | ریخته گری | 2d | 2024-11-25 A | 2024-11-26 A | 33 | 100% |  | 2024-11-25 | 2024-11-26 | 2d |  |  | مس [0.2 تن]; اهن [2.5 تن]; هزینه ریخته گری [0.1%]; برق | 16h | 16h | 14,204,000 | 14,204,000 | 13,004,000 |
| 36 | 3.1.4 | تراشکاری | 3d | 2024-11-27 | 2024-11-30 | 35 |  |  | 2024-11-27 | 2024-11-30 | 3d | 0d |  | مکانیک; متلوژی; برق | 72h |  | 19,200,000 | 19,200,000 |  |
| 37 | 3.1.5 | سوراخ کاری و قلاویز | 2d | 2024-12-01 | 2024-12-02 | 36 |  |  | 2024-12-01 | 2024-12-02 | 2d | 0d |  |  |  |  |  |  |  |
| 38 | 3.2 | **ساخت قطعات پلاستیکی** | 33d | 2024-11-07 | 2024-12-15 |  |  |  | 2024-11-07 | 2024-12-15 | 33d | 0d |  |  | 16h |  | 4,800,000 | 4,800,000 |  |
| 39 | 3.2.1 | قالب سازی | 10d | 2024-11-07 | 2024-11-18 |  |  |  | 2024-11-07 | 2024-11-18 | 10d | 18d | 0d |  |  |  |  |  |  |
| 40 | 3.2.2 | تزریق پلاستیک | 3d | 2024-11-19 | 2024-11-21 | 39 |  |  | 2024-11-19 | 2024-11-21 | 3d | 18d | 0d |  |  |  |  |  |  |
| 41 | 3.2.3 | تراشکاری و سوراخ کاری | 2d | 2024-11-23 | 2024-11-24 | 40 |  |  | 2024-11-23 | 2024-11-24 | 2d | 18d |  |  |  |  |  |  |  |
| 42 | 3.2.4 | **مونتاژ نهایی** | 11d | 2024-12-03 | 2024-12-15 | 32 |  |  | 2024-12-03 | 2024-12-15 | 11d | 0d |  |  | 16h |  | 4,800,000 | 4,800,000 |  |
| 43 | 3.2.4.1 | سوار کردن قطعات فلزی روی بدنه | 4d | 2024-12-03 | 2024-12-07 |  |  |  | 2024-12-03 | 2024-12-07 | 4d | 0d |  |  |  |  |  |  |  |
| 44 | 3.2.4.2 | سوار کردن قطعات پلاستیکی روی بدنه | 2d | 2024-12-08 | 2024-12-09 | 43 |  |  | 2024-12-08 | 2024-12-09 | 2d | 0d |  | مکانیک | 16h |  | 4,800,000 | 4,800,000 |  |
| 45 | 3.2.4.3 | نصب قطعات الکترونیکی | 3d | 2024-12-10 | 2024-12-12 | 44 |  |  | 2024-12-10 | 2024-12-12 | 3d | 0d |  |  |  |  |  |  |  |
| 46 | 3.2.4.4 | تست مکانیکی | 1d | 2024-12-14 | 2024-12-14 | 45 |  |  | 2024-12-14 | 2024-12-14 | 1d | 0d |  |  |  |  |  |  |  |
| 47 | 3.2.4.5 | تست اولیه | 1d | 2024-12-15 | 2024-12-15 | 46 |  |  | 2024-12-15 | 2024-12-15 | 1d | 0d |  |  |  |  |  |  |  |
